# Date_Helper

Schedule from ProjectLibre, 2025-09-10 to 2026-03-02.

## Calendars

- Пятидневка: Mon-Fri 08:00-12:00, 13:00-17:00; Sat-Sun off.

## Resources

| Resource | Rate |
| --- | --- |
| Не назначено |  |
| Разработчик Тимур | 300 |
| Компьютер | 22 |
| ChatGPT | 1.3 |

## Schedule

| ID | WBS | Task | Duration | Start | Finish | Predecessors | Complete | Baseline start | Baseline finish | Constraint | Resources |
| --- | --- | --- | --- | --- | --- | --- | --- | --- | --- | --- | --- |
| 1 | 1 | **Аналитика** | 12.5d | 2025-09-10 | 2025-09-29 |  | 100% | 2025-09-22 | 2025-09-29 | as late as possible |  |
| 2 | 1.1 | Формирование первичной темы ВКР | 2d | 2025-09-10 | 2025-09-12 |  | 100% | 2025-09-22 | 2025-09-22 | as late as possible | Разработчик Тимур [10.42%]; Компьютер; ChatGPT |
| 3 | 1.2 | Проверка реализуемости темы (поиск решений и ограничений по открытым источникам) | 1.25d | 2025-09-12 | 2025-09-15 | 2 | 100% | 2025-09-22 | 2025-09-24 | as late as possible | Разработчик Тимур [50%]; Компьютер; ChatGPT |
| 4 | 1.3 | Уточнение и корректировка темы совместно с научным руководителем | 2d | 2025-09-15 | 2025-09-17 | 3 | 100% | 2025-09-24 | 2025-09-24 | as late as possible | Разработчик Тимур [10.42%]; Компьютер; ChatGPT |
| 5 | 1.4 | Повторная проверка реализуемости уточнённой темы (сравнение подходов/рисков) | 1.25d | 2025-09-17 | 2025-09-18 | 4 | 100% | 2025-09-24 | 2025-09-25 | as late as possible | Разработчик Тимур [50%]; Компьютер; ChatGPT |
| 6 | 1.5 | Формирование и фиксация основной концепции решения | 2d | 2025-09-19 | 2025-09-22 | 5 | 100% | 2025-09-25 | 2025-09-26 | as late as possible | Разработчик Тимур [10.42%]; Компьютер; ChatGPT |
| 7 | 1.6 | Анализ аналогов (функции, ограничения, применимость к задаче) | 2d | 2025-09-23 | 2025-09-24 | 6 | 100% | 2025-09-26 | 2025-09-26 | as late as possible | Разработчик Тимур [10.42%]; Компьютер; ChatGPT |
| 8 | 1.7 | Анализ методов решения (OCR, CV-подходы, детекция) | 2d | 2025-09-25 | 2025-09-29 | 7 | 100% | 2025-09-26 | 2025-09-29 | finish no later than 2025-09-29 | Разработчик Тимур [10.42%]; Компьютер; ChatGPT |
| 9 | 2 | **Данные** | 0.04d | 2025-11-05 | 2025-11-05 | 1 | 100% | 2025-11-07 | 2025-11-07 | as late as possible |  |
| 10 | 2.1 | Подготовка первичного набора данных для тестирования | 0.04d | 2025-11-05 | 2025-11-05 |  | 100% | 2025-11-07 | 2025-11-07 | as late as possible | Разработчик Тимур [50%]; Компьютер; ChatGPT |
| 11 | 3 | **R&D** | 4.64d | 2025-11-05 | 2025-11-11 | 9 | 100% | 2025-11-07 | 2025-11-12 | as late as possible |  |
| 12 | 3.1 | Реализация прототипа метода №1 (OCR) | 1.67d | 2025-11-05 | 2025-11-06 |  | 100% | 2025-11-07 | 2025-11-10 | as late as possible | Разработчик Тимур [15%]; Компьютер; ChatGPT |
| 13 | 3.2 | Запуск и первичная интеграция метода №1 | 0.83d | 2025-11-10 | 2025-11-10 | 12 | 100% | 2025-11-11 | 2025-11-12 | as late as possible | Разработчик Тимур [15%]; Компьютер; ChatGPT |
| 14 | 3.3 | Тестирование и оценка метода №1 на тестовых данных | 0.83d | 2025-11-11 | 2025-11-11 | 13 | 100% | 2025-11-12 | 2025-11-12 | as late as possible | Разработчик Тимур; Компьютер; ChatGPT |
| 15 | 3.4 | Реализация прототипа метода №2 (аналитический поиск области даты) | 0.83d | 2025-11-06 | 2025-11-07 | 12SS | 100% | 2025-11-07 | 2025-11-10 | as late as possible | Разработчик Тимур [15%]; Компьютер; ChatGPT |
| 16 | 3.5 | Запуск и первичная интеграция метода №2 | 0.2d | 2025-11-07 | 2025-11-07 | 15 | 100% | 2025-11-10 | 2025-11-10 | as late as possible | Разработчик Тимур [15%]; Компьютер; ChatGPT |
| 17 | 3.6 | Тестирование и сравнительная оценка метода №2 | 1.94d | 2025-11-07 | 2025-11-11 | 16 | 100% | 2025-11-10 | 2025-11-12 | as late as possible | Разработчик Тимур [15%]; Компьютер; ChatGPT |
| 18 | 3.7 | Проработка и выбор метода №3 (детекция YOLO) | 1.39d | 2025-11-10 | 2025-11-11 | 15SS | 100% | 2025-11-11 | 2025-11-12 | as late as possible | Разработчик Тимур [15%]; Компьютер; ChatGPT |
| 19 | 4 | **ML** | 1.17d | 2025-11-11 | 2025-11-12 | 11 | 100% | 2025-11-12 | 2026-01-12 | finish no later than 2025-11-13 |  |
| 20 | 4.1 | Реализация базовой интеграции YOLO (подготовка окружения/запуск) | 1d | 2025-11-11 | 2025-11-12 |  | 100% | 2025-11-12 | 2025-11-13 | as late as possible | Разработчик Тимур [50%]; Компьютер; ChatGPT |
| 21 | 4.2 | Тестирование и первичная оценка качества метода №3 | 0.17d | 2025-11-12 | 2025-11-12 | 20 | 100% | 2026-01-12 | 2026-01-12 | as late as possible | Разработчик Тимур [50%]; Компьютер; ChatGPT |
| 22 | 5 | **Проектирование** | 0.17d | 2026-01-09 | 2026-01-09 | 19 | 100% | 2026-01-12 | 2026-01-12 | as late as possible |  |
| 23 | 5.1 | Проработка сценария внедрения решения в систему (с научным руководителем) | 0.17d | 2026-01-09 | 2026-01-09 |  | 100% | 2026-01-12 | 2026-01-12 | as late as possible | Разработчик Тимур [50%]; Компьютер; ChatGPT |
| 24 | 6 | **Документы** | 2d | 2026-01-09 | 2026-01-13 | 22 | 100% | 2026-01-13 | 2026-01-13 | as late as possible |  |
| 25 | 6.1 | Подготовка технического задания (ТЗ) | 2d | 2026-01-09 | 2026-01-13 |  | 100% | 2026-01-13 | 2026-01-13 | as late as possible | Разработчик Тимур [50%]; Компьютер; ChatGPT |

| ID | WBS | Task | Duration | Start | Finish | Predecessors | Complete | Baseline start | Baseline finish | Constraint | Resources |
| --- | --- | --- | --- | --- | --- | --- | --- | --- | --- | --- | --- |
| 26 | 7 | **Моб. приложение** | 15.33d | 2026-01-13 | 2026-02-03 | 24 | 100% | 2026-01-13 | 2026-02-03 | as late as possible |  |
| 27 | 7.1 | Реализовать экран сканирования: получение видеопотока, цикл обработки кадров (F1) | 2d | 2026-01-13 | 2026-01-15 |  | 100% | 2026-01-13 | 2026-01-15 | as late as possible | Разработчик Тимур [25%]; Компьютер; ChatGPT |
| 28 | 7.2 | Реализовать отображение bbox/подсветки даты на экране (F2) | 1d | 2026-01-15 | 2026-01-16 | 27 | 100% | 2026-01-15 | 2026-01-16 | as late as possible | Разработчик Тимур [25%]; Компьютер; ChatGPT |
| 29 | 7.3 | Реализовать сценарий «получить дату изготовления»: выбор способа (скан/вручную), валидация формата (F3) | 1.33d | 2026-01-16 | 2026-01-19 | 28 | 100% | 2026-01-16 | 2026-01-19 | as late as possible | Разработчик Тимур [25%]; Компьютер; ChatGPT |
| 30 | 7.4 | Реализовать «положить продукт на хранение»: форма + сохранение (F4) | 1.67d | 2026-01-20 | 2026-01-21 | 29 | 100% | 2026-01-20 | 2026-01-21 | as late as possible | Разработчик Тимур [25%]; Компьютер; ChatGPT |
| 31 | 7.5 | Реализовать «просмотреть продукты на хранении»: список, сортировка/поиск (минимально) (F5) | 1.67d | 2026-01-21 | 2026-01-23 | 30 | 100% | 2026-01-21 | 2026-01-23 | as late as possible | Разработчик Тимур [25%]; Компьютер; ChatGPT |
| 32 | 7.6 | Реализовать «удалить продукт с хранения» + подтверждение (F6) | 0.67d | 2026-01-23 | 2026-01-23 | 31 | 100% | 2026-01-23 | 2026-01-23 | as late as possible | Разработчик Тимур [25%]; Компьютер; ChatGPT |
| 33 | 7.7 | Реализовать регистрацию пользователя (UI + обработка ошибок) (F7) | 1.33d | 2026-01-26 | 2026-01-27 | 32 | 100% | 2026-01-26 | 2026-01-27 | as late as possible | Разработчик Тимур [25%]; Компьютер; ChatGPT |
| 34 | 7.8 | Реализовать авторизацию пользователя и хранение токена/сессии (F8) | 1.33d | 2026-01-27 | 2026-01-28 | 33 | 100% | 2026-01-27 | 2026-01-28 | as late as possible | Разработчик Тимур [25%]; Компьютер; ChatGPT |
| 35 | 7.9 | Реализовать отправку сообщения об ошибке: выбор/загрузка видео + комментарий (F9) | 1.67d | 2026-01-28 | 2026-01-30 | 34 | 100% | 2026-01-28 | 2026-01-30 | as late as possible | Разработчик Тимур [25%]; Компьютер; ChatGPT |
| 36 | 7.10 | Встроенная разметка в рамках жалобы: инструмент выделения области и формирование YOLO-разметки (как часть F9/F15) | 2.67d | 2026-01-30 | 2026-02-03 | 35 | 100% | 2026-01-30 | 2026-02-03 | as late as possible | Разработчик Тимур [25%]; Компьютер; ChatGPT |
| 37 | 8 | **Офлайн ML** | 8.89d | 2026-02-06 | 2026-02-19 | 26 | 100% | 2026-02-06 | 2026-02-19 | as late as possible |  |
| 38 | 8.1 | Интеграция офлайн-модели на устройстве (TFLite/NCNN), вызов инференса (F1, «офлайн») | 5.56d | 2026-02-06 | 2026-02-13 |  | 100% | 2026-02-06 | 2026-02-13 | as late as possible | Разработчик Тимур [15%]; Компьютер; ChatGPT |
| 39 | 8.2 | Оптимизация скорости/памяти: пороги, уменьшение размера входа, замер FPS/latency (F1, требования по производительности) | 3.33d | 2026-02-16 | 2026-02-19 | 38 | 100% | 2026-02-16 | 2026-02-19 | as late as possible | Разработчик Тимур [15%]; Компьютер; ChatGPT |
| 40 | 9 | **Бэкенд** | 12d | 2026-02-03 | 2026-02-19 | 26SS | 100% | 2026-02-03 | 2026-02-19 | as late as possible |  |
| 41 | 9.1 | Реализовать API авторизации/регистрации (эндпоинты + валидация) (F7, F8) | 2.33d | 2026-02-03 | 2026-02-05 |  | 100% | 2026-02-03 | 2026-02-05 | as late as possible | Разработчик Тимур [25%]; Компьютер; ChatGPT |
| 42 | 9.2 | Реализовать API «хранилище»: add/list/delete + права доступа (F4–F6) | 2.67d | 2026-02-05 | 2026-02-10 | 41 | 100% | 2026-02-05 | 2026-02-10 | as late as possible | Разработчик Тимур [25%]; Компьютер; ChatGPT |
| 43 | 9.3 | Реализовать API «детекция» (при необходимости серверного режима) (F1–F2) | 2d | 2026-02-10 | 2026-02-12 | 42 | 100% | 2026-02-10 | 2026-02-12 | as late as possible | Разработчик Тимур [25%]; Компьютер; ChatGPT |
| 44 | 9.4 | Реализовать API «сообщения об ошибке»: приём видео+разметки+комментария, сохранение (F9) | 2.67d | 2026-02-12 | 2026-02-16 | 43 | 100% | 2026-02-12 | 2026-02-16 | as late as possible | Разработчик Тимур [25%]; Компьютер; ChatGPT |
| 45 | 9.5 | Реализовать схему БД по ER: миграции, внешние ключи, индексы, ограничения (для F4–F14) | 2.33d | 2026-02-17 | 2026-02-19 | 44 | 100% | 2026-02-17 | 2026-02-19 | as late as possible | Разработчик Тимур [25%]; Компьютер; ChatGPT |
| 46 | 10 | **Админка** | 26.67d | 2026-01-13 | 2026-02-19 | 26SS | 100% | 2026-01-13 | 2026-02-19 | as late as possible |  |
| 47 | 10.1 | Реализовать авторизацию администратора (F8 для админа) | 2.5d | 2026-01-13 | 2026-01-16 |  | 100% | 2026-01-13 | 2026-01-16 | as late as possible | Разработчик Тимур [10%]; Компьютер; ChatGPT |
| 48 | 10.2 | Реализовать «просмотреть сообщения об ошибках» (F10) | 3.33d | 2026-01-16 | 2026-01-21 | 47 | 100% | 2026-01-16 | 2026-01-21 | as late as possible | Разработчик Тимур [10%]; Компьютер; ChatGPT |
| 49 | 10.3 | Реализовать «удалить сообщения об ошибках» и отметку «обработано» (F11) | 2.5d | 2026-01-21 | 2026-01-23 | 48 | 100% | 2026-01-21 | 2026-01-23 | as late as possible | Разработчик Тимур [10%]; Компьютер; ChatGPT |
| 50 | 10.4 | Реализовать «список пользователей» и «блокировка пользователя» (F12–F13) | 4.17d | 2026-01-26 | 2026-01-30 | 49 | 100% | 2026-01-26 | 2026-01-30 | as late as possible | Разработчик Тимур [10%]; Компьютер; ChatGPT |
| 51 | 10.5 | Реализовать «статистика качества»: отчёты по версиям модели, динамика по времени (F14) | 6.67d | 2026-01-30 | 2026-02-09 | 50 | 100% | 2026-01-30 | 2026-02-09 | as late as possible | Разработчик Тимур [10%]; Компьютер; ChatGPT |
| 52 | 10.6 | Доработка разметки видео (AnnotationTool): экспорт YOLO, проверка целостности, пакетная разметка (F15) | 7.5d | 2026-02-09 | 2026-02-19 | 51 | 100% | 2026-02-09 | 2026-02-19 | as late as possible | Разработчик Тимур [10%]; Компьютер; ChatGPT |

| ID | WBS | Task | Duration | Start | Finish | Predecessors | Complete | Baseline start | Baseline finish | Constraint | Resources |
| --- | --- | --- | --- | --- | --- | --- | --- | --- | --- | --- | --- |
| 53 | 11 | **ML** | 3.67d | 2026-02-19 | 2026-02-24 | 37, 40, 46 | 100% | 2026-02-19 | 2026-02-24 | as late as possible |  |
| 54 | 11.1 | Подготовить конфиги обучения, пайплайн датасета, аугментации (F16) | 1d | 2026-02-19 | 2026-02-20 |  | 100% | 2026-02-19 | 2026-02-20 | as late as possible | Разработчик Тимур [50%]; Компьютер; ChatGPT |
| 55 | 11.2 | Обучение/дообучение модели на накопленных примерах + сохранение версии/метрик (F16) | 1.67d | 2026-02-20 | 2026-02-23 | 54 | 100% | 2026-02-20 | 2026-02-23 | as late as possible | Разработчик Тимур [50%]; Компьютер; ChatGPT |
| 56 | 11.3 | Оценка качества: тестовый прогон, расчёт метрик, сравнение версий (F14, F16) | 1d | 2026-02-24 | 2026-02-24 | 55 | 100% | 2026-02-24 | 2026-02-24 | as late as possible | Разработчик Тимур [50%]; Компьютер; ChatGPT |
| 57 | 12 | **Интеграция** | 1.83d | 2026-02-25 | 2026-02-26 | 53 | 100% | 2026-02-25 | 2026-02-26 | as late as possible |  |
| 58 | 12.1 | Процедура обновления модели: деплой весов на сервер и обновление мобильной модели (F16, эксплуатация) | 1d | 2026-02-25 | 2026-02-25 |  | 100% | 2026-02-25 | 2026-02-25 | as late as possible | Разработчик Тимур [50%]; Компьютер; ChatGPT |
| 59 | 12.2 | Тестирование отказов: нет сети, нет камеры, ошибки загрузки видео, лимиты размера (F1–F11) | 0.83d | 2026-02-26 | 2026-02-26 | 58 | 100% | 2026-02-26 | 2026-02-26 | as late as possible | Разработчик Тимур [50%]; Компьютер; ChatGPT |
| 60 | 13 | **Документация** | 2.17d | 2026-02-26 | 2026-03-02 | 57 | 100% | 2026-02-26 | 2026-03-02 | finish no later than 2026-03-03 |  |
| 61 | 13.1 | Подготовка раздела «эксперименты и результаты»: описание датасета, сравнение методов, выводы (F14–F16) | 1.17d | 2026-02-26 | 2026-02-27 |  | 100% | 2026-02-26 | 2026-02-27 | as late as possible | Разработчик Тимур [50%]; Компьютер; ChatGPT |
| 62 | 13.2 | Обновление диаграмм/описаний под финальную реализацию и подготовка презентации/демо (все ФТ) | 1d | 2026-03-02 | 2026-03-02 | 61 | 100% | 2026-03-02 | 2026-03-02 | as late as possible | Разработчик Тимур [50%]; Компьютер; ChatGPT |
